# RESIDENTIAL BUILDING A-7

Schedule from Primavera P6, 2024-03-01 to 2025-09-25, data date 2024-06-17, costs in INR, A marks actual dates.

## Calendars

- G+2 BUILDING: Mon-Fri 09:00-13:00, 14:00-18:00; Sat 09:00-13:00, 14:00-17:00; Sun off. Exceptions (off unless hours are given): 2024-03-02 09:00-13:00, 14:00-18:00, 2024-03-06 09:00-13:00, 14:00-18:00, 2024-03-09 08:00-16:00, 2024-03-16 08:00-16:00, 2024-03-23 08:00-16:00, 2024-03-27 09:00-13:00, 14:00-18:00, 2024-03-30 08:00-16:00, 2024-04-02 09:00-13:00, 14:00-18:00, 2024-04-06 09:00-13:00, 14:00-18:00, 2024-04-13 08:00-16:00, 2024-04-20 08:00-16:00, 2024-04-27 09:00-13:00, 14:00-18:00, 2024-05-02 09:00-13:00, 14:00-18:00, 2024-05-04 08:00-16:00, 2024-05-06 09:00-13:00, 14:00-18:00, 2024-05-11 08:00-16:00, 2024-05-18 08:00-16:00, 2024-05-25 08:00-16:00, 2024-05-27 09:00-13:00, 14:00-18:00, 2024-05-30 09:00-13:00, 14:00-18:00, 2024-06-01 08:00-16:00, 2024-06-06 09:00-13:00, 14:00-18:00, 2024-06-08 08:00-16:00, 2024-06-15 08:00-16:00, 2024-06-22 08:00-16:00, 2024-06-27 09:00-13:00, 14:00-18:00, 2024-06-29 08:00-16:00, 2024-07-02, 2024-07-06 08:00-16:00, 2024-07-13 08:00-16:00, 2024-07-20 08:00-16:00, 2024-07-27 08:00-13:00, 14:00-18:00, 2024-08-03 08:00-16:00, 2024-08-10 09:00-13:00, 14:00-18:00, 2024-08-17 08:00-16:00, 2024-08-24 08:00-16:00, 2024-08-27 09:00-13:00, 14:00-18:00, 2024-08-31 08:00-16:00, 2024-09-06 to 2024-09-07 09:00-13:00, 14:00-18:00, 2024-09-14 09:00-13:00, 14:00-18:00, 2024-09-21 09:00-13:00, 14:00-18:00, 2024-09-27 09:00-13:00, 14:00-17:00, 2024-09-28 09:00-13:00, 14:00-18:00, 2024-10-05 08:00-13:00, 14:00-18:00, 2024-10-06 09:00-13:00, 14:00-18:00, 2024-10-12 08:00-13:00, 14:00-18:00, 2024-10-19 08:00-13:00, 14:00-18:00, 2024-10-26 08:00-13:00, 14:00-18:00, 2024-10-27 09:00-13:00, 14:00-18:00.
- 6x10: Mon-Sat 08:00-18:00; Sun off. Exceptions (off unless hours are given): 2024-03-01 to 2024-03-09 08:00-16:00, 2024-03-11 to 2024-03-16 08:00-16:00, 2024-03-18 to 2024-03-23 08:00-16:00, 2024-03-25 to 2024-03-30 08:00-16:00, 2024-04-01 to 2024-04-06 08:00-16:00, 2024-04-08 to 2024-04-13 08:00-16:00, 2024-04-15 to 2024-04-20 08:00-16:00, 2024-04-22 to 2024-04-27 08:00-16:00, 2024-04-29 to 2024-05-04 08:00-16:00, 2024-05-06 to 2024-05-11 08:00-16:00, 2024-05-13 to 2024-05-18 08:00-16:00, 2024-05-20 to 2024-05-25 08:00-16:00, 2024-05-27 to 2024-06-01 08:00-16:00, 2024-06-03 to 2024-06-08 08:00-16:00, 2024-06-10 to 2024-06-15 08:00-16:00, 2024-06-17 to 2024-06-22 08:00-16:00, 2024-06-24 to 2024-06-29 08:00-16:00, 2024-07-01 to 2024-07-06 08:00-16:00, 2024-07-08 to 2024-07-13 08:00-16:00, 2024-07-15 to 2024-07-20 08:00-16:00, 2024-07-22 to 2024-07-27 08:00-16:00, 2024-07-29 to 2024-08-03 08:00-16:00, 2024-08-05 to 2024-08-10 08:00-16:00, 2024-08-12 to 2024-08-17 08:00-16:00, 2024-08-19 to 2024-08-24 08:00-16:00, 2024-08-26 to 2024-08-31 08:00-16:00, 2024-09-02 to 2024-09-07 08:00-16:00, 2024-09-09 to 2024-09-14 08:00-16:00, 2024-09-16 to 2024-09-21 08:00-16:00, 2024-09-23 to 2024-09-28 08:00-16:00, 2024-09-30 to 2024-10-05 08:00-16:00, 2024-10-07 to 2024-10-12 08:00-16:00, 2024-10-14 to 2024-10-19 08:00-16:00, 2024-10-21 to 2024-10-26 08:00-16:00, 2024-10-28 to 2024-11-02 08:00-16:00, 2024-11-04 to 2024-11-09 08:00-16:00, 2024-11-11 to 2024-11-16 08:00-16:00, 2024-11-18 to 2024-11-23 08:00-16:00, 2024-11-25 to 2024-11-30 08:00-16:00, 2024-12-02 to 2024-12-07 08:00-16:00, 2024-12-09 to 2024-12-14 08:00-16:00, 2024-12-16 to 2024-12-21 08:00-16:00, 2024-12-23 to 2024-12-28 08:00-16:00, 2024-12-30 to 2025-01-04 08:00-16:00, 2025-01-06 to 2025-01-11 08:00-16:00, 2025-01-13 to 2025-01-18 08:00-16:00, 2025-01-20 to 2025-01-25 08:00-16:00, 2025-01-27 to 2025-02-01 08:00-16:00, 2025-02-03 to 2025-02-08 08:00-16:00, 2025-02-10 to 2025-02-15 08:00-16:00, 2025-02-17 to 2025-02-22 08:00-16:00, 2025-02-24 to 2025-03-01 08:00-16:00, 2025-03-03 to 2025-03-08 08:00-16:00, 2025-03-10 to 2025-03-15 08:00-16:00, 2025-03-17 to 2025-03-22 08:00-16:00, 2025-03-24 to 2025-03-29 08:00-16:00, 2025-03-31 to 2025-04-05 08:00-16:00, 2025-04-07 to 2025-04-12 08:00-16:00, 2025-04-14 to 2025-04-19 08:00-16:00, 2025-04-21 to 2025-04-26 08:00-16:00, 2025-04-28 to 2025-05-03 08:00-16:00, 2025-05-05 to 2025-05-10 08:00-16:00, 2025-05-12 to 2025-05-17 08:00-16:00, 2025-05-19 to 2025-05-24 08:00-16:00, 2025-05-26 to 2025-05-31 08:00-16:00, 2025-06-02 to 2025-06-07 08:00-16:00, 2025-06-09 to 2025-06-14 08:00-16:00, 2025-06-16 to 2025-06-21 08:00-16:00, 2025-06-23 to 2025-06-28 08:00-16:00, 2025-06-30 to 2025-07-05 08:00-16:00, 2025-07-07 to 2025-07-12 08:00-16:00, 2025-07-14 to 2025-07-19 08:00-16:00, 2025-07-21 to 2025-07-26 08:00-16:00, 2025-07-28 to 2025-08-02 08:00-16:00, 2025-08-04 to 2025-08-09 08:00-16:00, 2025-08-11 to 2025-08-16 08:00-16:00, 2025-08-18 to 2025-08-23 08:00-16:00, 2025-08-25 to 2025-08-30 08:00-16:00.

## Resources

| Resource | Group | Rate | Notes |
| --- | --- | --- | --- |
| SITE ENGINEERER | labor | 500 | ï»¿ |
| MAZDOOR | labor | 45 | ï»¿ |
| MASON | labor | 45 | ï»¿ |
| HEAD MASON | labor | 90 | ï»¿ |
| CARPENER | labor | 55 | ï»¿ |
| CONCRETE 1 | material | 515 | ï»¿ |
| STEEL FIXER | labor | 90 | ï»¿ |
| BRICK | material | 10 | ï»¿ |
| CONCRETE | material | 4100 | ï»¿ |
| ELECTRICIAN | labor | 125 | ï»¿ |
| PLUMBER | labor | 100 | ï»¿ |
| TILE MASON | labor | 60 | ï»¿ |
| PAINTER | labor | 95 | ï»¿ |
| SENIOR ENGG | labor | 650 | ï»¿ |
| STRUCTURAL ENGINEERER | labor | 300 | ï»¿ |

## Schedule

| ID | WBS | Activity | Duration | Start | Finish | Predecessors | Complete | Planned start | Planned finish | Total float | Calendar | Resources | Cost |
| --- | --- | --- | --- | --- | --- | --- | --- | --- | --- | --- | --- | --- | --- |
|  | PreP | **Pre Project Phase** |  | 2024-03-01 | 2024-07-03 |  |  |  |  |  |  |  |  |
|  | AP | **Architectural Phase** |  | 2024-03-05 | 2024-06-17 |  |  |  |  |  |  |  |  |
| A2010 |  | AUTOCAD design of existing building | 0.8d | 2024-03-05 A | 2024-03-05 A | A2000 | 100% | 2024-06-10 | 2024-06-10 |  | 6x10 |  |  |
| A2020 |  | Comparison of existing building with NBC | 0.6d | 2024-03-06 A | 2024-03-06 A | A2010 | 100% | 2024-06-11 | 2024-06-11 |  | 6x10 | SENIOR ENGG [6 h] | 3,900 |
| A2040 |  | Archtectural Design of proposed building | 1.6d | 2024-03-07 A | 2024-03-08 A | A2020 | 100% | 2024-06-12 | 2024-06-13 |  | 6x10 | STRUCTURAL ENGINEERER [16 h] | 4,800 |
| A2050 |  | Comparison of proposed building with NBC | 1.6d | 2024-03-09 A | 2024-03-11 A | A2040 | 100% | 2024-06-14 | 2024-06-15 |  | 6x10 | SENIOR ENGG [16 h] | 10,400 |
| A2060 |  | Bubble Diagram | 0.8d | 2024-03-12 A | 2024-03-12 A | A2050 | 100% | 2024-06-15 | 2024-06-15 |  | 6x10 | STRUCTURAL ENGINEERER [8 h] | 2,400 |
| A2070 |  | Circulation diagram | 0.8d | 2024-03-13 A | 2024-03-13 A | A2060 | 100% | 2024-06-17 | 2024-06-17 |  | 6x10 | STRUCTURAL ENGINEERER [8 h] | 2,400 |
| A2200 |  | Water Supply Lines & Electrical lines | 0.8d | 2024-06-17 | 2024-06-17 |  |  |  |  | 0d | 6x10 | STRUCTURAL ENGINEERER [8 h] | 2,400 |
|  | SP | **Structural Phase** |  | 2024-06-18 | 2024-07-03 |  |  |  |  |  |  |  |  |
| A2080 |  | Column Placement | 0.8d | 2024-06-18 | 2024-06-18 | A2070, A2200 |  |  |  | 0d | 6x10 | STRUCTURAL ENGINEERER [8 h] | 2,400 |
| A2090 |  | Determination of Beam depth | 1.6d | 2024-06-19 | 2024-06-20 | A2080 |  |  |  | 0d | 6x10 | STRUCTURAL ENGINEERER [16 h] | 4,800 |
| A2100 |  | Central line diagram | 0.8d | 2024-06-21 | 2024-06-21 | A2090 |  |  |  | 0d | 6x10 | STRUCTURAL ENGINEERER [8 h] | 2,400 |
| A2110 |  | Load Calculation | 0.8d | 2024-06-22 | 2024-06-22 | A2100 |  |  |  | 0d | 6x10 | STRUCTURAL ENGINEERER [8 h] | 2,400 |
| A2120 |  | Modelling in SAP | 0.8d | 2024-06-24 | 2024-06-24 | A2110 |  |  |  | 0d | 6x10 | STRUCTURAL ENGINEERER [8 h] | 2,400 |
| A2130 |  | Obtaining output data from SAP | 0.8d | 2024-06-25 | 2024-06-25 | A2120 |  |  |  | 0d | 6x10 | STRUCTURAL ENGINEERER [8 h] | 2,400 |
| A2140 |  | Slab Design | 0.8d | 2024-06-26 | 2024-06-26 | A2130 |  |  |  | 0d | 6x10 | STRUCTURAL ENGINEERER [8 h] | 2,400 |
| A2150 |  | Grouping of beams | 0.8d | 2024-06-27 | 2024-06-27 | A2140 |  |  |  | 0d | 6x10 | STRUCTURAL ENGINEERER [8 h] | 2,400 |
| A2160 |  | Beam design | 1.6d | 2024-06-28 | 2024-06-29 | A2150 |  |  |  | 0d | 6x10 | STRUCTURAL ENGINEERER [16 h] | 4,800 |
| A2170 |  | Column Grouping | 0.8d | 2024-07-01 | 2024-07-01 | A2160 |  |  |  | 0d | 6x10 | STRUCTURAL ENGINEERER [8 h] | 2,400 |
| A2180 |  | Design of column | 0.8d | 2024-07-02 | 2024-07-02 | A2170 |  |  |  | 0d | 6x10 | STRUCTURAL ENGINEERER [8 h] | 2,400 |
| A2190 |  | Design of footing | 0.8d | 2024-07-03 | 2024-07-03 | A2180 |  |  |  | 0d | 6x10 | STRUCTURAL ENGINEERER [8 h] | 2,400 |
|  | SV | **Site Visit** |  | 2024-03-01 | 2024-03-04 |  |  |  |  |  |  |  |  |
| A1990 |  | Selection of building | 1.6d | 2024-03-01 A | 2024-03-02 A |  | 100% | 2024-06-06 | 2024-06-07 |  | 6x10 | SITE ENGINEERER [1 h]; SENIOR ENGG [16 h] | 10,900 |
| A2000 |  | Obtaining Necessary details of building | 0.8d | 2024-03-04 A | 2024-03-04 A | A1990 | 100% | 2024-06-08 | 2024-06-08 |  | 6x10 | SITE ENGINEERER [8 h] | 4,000 |

| ID | WBS | Activity | Duration | Start | Finish | Predecessors | Planned start | Planned finish | Total float | Resources | Cost |
| --- | --- | --- | --- | --- | --- | --- | --- | --- | --- | --- | --- |
|  | PP | **Project Phase** |  | 2024-07-03 | 2025-09-25 |  |  |  |  |  |  |
|  | SS | **Sub Structure** |  | 2024-07-03 | 2024-07-23 |  |  |  |  |  |  |
| A1070 |  | Building Lineout | 1d | 2024-07-03 | 2024-07-04 | A2190 |  |  | 0d | SITE ENGINEERER [8 h]; MAZDOOR [8 h] | 4,360 |
| A1080 |  | Excavation | 4d | 2024-07-04 | 2024-07-09 | A1070 |  |  | 0d | MAZDOOR [32 h]; MASON [32 h]; HEAD MASON [32 h] | 5,760 |
| A1090 |  | Preparation of PCC work | 2d | 2024-07-09 | 2024-07-11 | A1080 |  |  | 0d | MAZDOOR [16 h]; HEAD MASON [16 h]; MASON [16 h] | 2,880 |
| A1100 |  | Soiling | 3d | 2024-07-11 | 2024-07-15 | A1090 |  |  | 0d | MAZDOOR [24 h]; MASON [24 h] | 2,160 |
| A1110 |  | Shutteringof PCC | 4d | 2024-07-15 | 2024-07-19 | A1100 |  |  | 0d | CARPENER [32 h]; MAZDOOR [32 h] | 3,200 |
| A1120 |  | Pouring of PCC | 2d | 2024-07-19 | 2024-07-22 | A1110 |  |  | 0d | MASON [16 h]; HEAD MASON [16 h]; MAZDOOR [16 h]; CONCRETE 1 [16] | 11,120 |
| A1130 |  | De-shuttering | 1d | 2024-07-22 | 2024-07-23 | A1120 |  |  | 0d | MAZDOOR [8 h] | 360 |
|  | POF | **Preparation of Foundation** |  | 2024-07-23 | 2024-08-02 |  |  |  |  |  |  |
| A1140 |  | Layout Marking | 2d | 2024-07-23 | 2024-07-25 | A1130 |  |  | 0d | HEAD MASON [16 h]; MAZDOOR [16 h] | 2,160 |
| A1150 |  | Laying of Reinforcement | 2d | 2024-07-25 | 2024-07-27 | A1140 |  |  | 0d | STEEL FIXER [16 h]; MAZDOOR [16 h] | 2,160 |
| A1160 |  | Shuttering for Foundation | 3d | 2024-07-27 | 2024-07-31 | A1150 |  |  | 0d | CARPENER [24 h]; MAZDOOR [24 h] | 2,400 |
| A1190 |  | Pouring of Concrete | 1d | 2024-07-31 | 2024-08-01 | A1160 |  |  | 0d | CONCRETE 1 [8]; MASON [8 h]; MAZDOOR [8 h] | 4,840 |
| A1200 |  | Deshuttering | 1d | 2024-08-01 | 2024-08-02 | A1190 |  |  | 0d | MAZDOOR [8 h] | 360 |
|  | PW | **Plinth Work** |  | 2024-07-31 | 2024-08-19 |  |  |  |  |  |  |
| A1170 |  | Setting Level for Plinth | 2d | 2024-07-31 | 2024-08-02 | A1200 FF | 2024-08-02 | 2024-08-05 | 0d | MAZDOOR [16 h]; HEAD MASON [16 h] | 2,160 |
| A1180 |  | Plinth beam bottom shuttering | 3d | 2024-08-02 | 2024-08-06 | A1170 | 2024-08-05 | 2024-08-08 | 0d | MAZDOOR [24 h]; CARPENER [24 h] | 2,400 |
| A1210 |  | Laying of concrete | 2d | 2024-08-06 | 2024-08-08 | A1180 | 2024-08-08 | 2024-08-10 | 0d | CONCRETE 1 [16]; HEAD MASON [16 h]; MASON [16 h]; MAZDOOR [16 h] | 11,120 |
| A1220 |  | Side shuttering for beams | 1d | 2024-08-08 | 2024-08-09 | A1210 | 2024-08-10 | 2024-08-12 | 0d | MAZDOOR [8 h]; CARPENER [8 h] | 800 |
| A1230 |  | Pouring of concrete | 1d | 2024-08-09 | 2024-08-10 | A1220 | 2024-08-12 | 2024-08-13 | 0d | CONCRETE 1 [8]; HEAD MASON [8 h]; MASON [8 h]; MAZDOOR [8 h] | 5,560 |
| A1240 |  | Deshuttering | 1d | 2024-08-10 | 2024-08-12 | A1230 | 2024-08-13 | 2024-08-14 | 0d | MAZDOOR [8 h] | 360 |
| A1250 |  | Back Filling upto Plinth beam | 1d | 2024-08-12 | 2024-08-13 | A1240 | 2024-08-14 | 2024-08-15 | 0d | MAZDOOR [8 h] | 360 |
| A1260 |  | Compaction of soil | 2d | 2024-08-13 | 2024-08-15 | A1250 | 2024-08-15 | 2024-08-17 | 0d | MAZDOOR [16 h] | 720 |
| A1270 |  | Laying of PCC | 2d | 2024-08-15 | 2024-08-17 | A1260 | 2024-08-17 | 2024-08-20 | 0d | MAZDOOR [16 h]; MASON [16 h]; CONCRETE 1 [16] | 9,680 |
| A1280 |  | Laying of DPC | 1d | 2024-08-17 | 2024-08-19 | A1270 | 2024-08-20 | 2024-08-21 | 0d | MASON [8 h]; MAZDOOR [8 h] | 720 |

| ID | WBS | Activity | Duration | Start | Finish | Predecessors | Planned start | Planned finish | Total float | Resources | Cost |
| --- | --- | --- | --- | --- | --- | --- | --- | --- | --- | --- | --- |
|  | Supstr | **Super Structure** |  | 2024-08-19 | 2024-09-28 |  |  |  |  |  |  |
| A1290 |  | Staircase Shuttering | 3d | 2024-08-19 | 2024-08-22 | A1280 | 2024-08-21 | 2024-08-24 | 0d | MAZDOOR [24 h]; CARPENER [24 h] | 2,400 |
| A1300 |  | Stairecase Bar Bending | 3d | 2024-08-22 | 2024-08-26 | A1290 | 2024-08-24 | 2024-08-28 | 0d | STEEL FIXER [24 h]; MAZDOOR [24 h] | 3,240 |
| A1310 |  | Staircase Waist Slab Concrete | 2d | 2024-08-26 | 2024-08-28 | A1300 | 2024-08-28 | 2024-08-30 | 0d | MAZDOOR [16 h]; MASON [16 h]; HEAD MASON [16 h]; CONCRETE 1 [16] | 11,120 |
| A1320 |  | Column Rising upto Roof Level | 3d | 2024-08-28 | 2024-08-31 | A1310 | 2024-08-30 | 2024-09-03 | 0d | CONCRETE 1 [24]; HEAD MASON [24 h]; MASON [24 h]; MAZDOOR [24 h] | 16,680 |
| A1330 |  | Roof Shuttering | 4d | 2024-08-31 | 2024-09-05 | A1320 | 2024-09-03 | 2024-09-07 | 0d | MAZDOOR [32 h]; CARPENER [32 h] | 3,200 |
| A1340 |  | Roof Bar Bending | 6d | 2024-09-05 | 2024-09-12 | A1330 | 2024-09-07 | 2024-09-14 | 0d | STEEL FIXER [48 h]; MAZDOOR [48 h] | 6,480 |
| A1350 |  | Roof Concrete | 3d | 2024-09-12 | 2024-09-16 | A1340 | 2024-09-14 | 2024-09-18 | 0d | MAZDOOR [24 h]; MASON [24 h]; HEAD MASON [24 h]; CONCRETE 1 [24] | 16,680 |
| A1360 |  | Deshuttering | 1d | 2024-09-16 | 2024-09-17 | A1350 | 2024-09-18 | 2024-09-19 | 0d | MAZDOOR [8 h] | 360 |
| A1370 |  | Ceiling Plastering | 1d | 2024-09-17 | 2024-09-18 | A1360 | 2024-09-19 | 2024-09-20 | 0d | MAZDOOR [8 h]; MASON [8 h] | 720 |
| A1380 |  | Brickwork Upto Lintel Level | 4d | 2024-09-18 | 2024-09-23 | A1370 | 2024-09-20 | 2024-09-25 | 0d | BRICK [32]; MASON [32 h]; MAZDOOR [32 h] | 3,200 |
| A1390 |  | Rubble Soiling | 2d | 2024-09-23 | 2024-09-25 | A1380 | 2024-09-25 | 2024-09-27 | 0d | MAZDOOR [16 h]; MASON [16 h] | 1,440 |
| A1400 |  | Laying of PCC | 2d | 2024-09-25 | 2024-09-27 | A1390 | 2024-09-27 | 2024-09-30 | 0d | MASON [16 h]; MAZDOOR [16 h]; CONCRETE 1 [16] | 9,680 |
| A1410 |  | Laying of DPC | 1.12d | 2024-09-27 | 2024-09-28 | A1400 | 2024-09-30 | 2024-10-01 | 0d | MASON [9 h]; MAZDOOR [9 h] | 810 |
|  | FF | **First Floor** |  | 2024-09-28 | 2024-11-16 |  |  |  |  |  |  |
| A1420 |  | Column Rising upto Roof Level | 4d | 2024-09-28 | 2024-10-03 | A1410 | 2024-10-01 | 2024-10-05 | 0d | HEAD MASON [32 h]; MASON [32 h]; MAZDOOR [32 h]; CONCRETE 1 [32] | 22,240 |
| A1430 |  | Staircase shuttering | 3d | 2024-10-03 | 2024-10-06 | A1420 | 2024-10-05 | 2024-10-08 | 0d | CARPENER [24 h]; MAZDOOR [24 h] | 2,400 |
| A1440 |  | Staircase Bar Bending | 3d | 2024-10-06 | 2024-10-09 | A1430 | 2024-10-08 | 2024-10-11 | 0d | MAZDOOR [24 h]; STEEL FIXER [24 h] | 3,240 |
| A1450 |  | Staircase waist slab | 2d | 2024-10-09 | 2024-10-11 | A1440 | 2024-10-11 | 2024-10-14 | 0d | MAZDOOR [16 h]; MASON [16 h]; HEAD MASON [16 h]; CONCRETE 1 [16] | 11,120 |
| A1460 |  | Roof Shuttering | 3d | 2024-10-11 | 2024-10-15 | A1450 | 2024-10-14 | 2024-10-17 | 0d | CARPENER [24 h]; MAZDOOR [24 h] | 2,400 |
| A1470 |  | Roof Bar Bending | 3d | 2024-10-15 | 2024-10-18 | A1460 | 2024-10-17 | 2024-10-21 | 0d | MAZDOOR [24 h]; STEEL FIXER [24 h] | 3,240 |
| A1480 |  | Roof Concrete | 2d | 2024-10-18 | 2024-10-21 | A1470 | 2024-10-21 | 2024-10-23 | 0d | MASON [16 h]; HEAD MASON [16 h]; MAZDOOR [16 h]; CONCRETE 1 [16] | 11,120 |
| A1490 |  | Deshuttering | 2d | 2024-10-21 | 2024-10-23 | A1480 | 2024-10-23 | 2024-10-25 | 0d | MAZDOOR [16 h] | 720 |
| A1500 |  | Ceiling Plastering | 5.12d | 2024-10-23 | 2024-10-28 | A1490 | 2024-10-25 | 2024-10-30 | 0d | MAZDOOR [39 h]; MASON [39 h] | 3,510 |
| A1510 |  | Brickwork upto Lintel Level | 3.88d | 2024-10-28 | 2024-11-01 | A1500 | 2024-10-30 | 2024-11-04 | 0d | MASON [31 h]; MAZDOOR [31 h]; BRICK [31] | 3,100 |
| A1520 |  | Lintel and Sunshade Shuttering Work | 2d | 2024-11-01 | 2024-11-04 | A1510 | 2024-11-04 | 2024-11-06 | 0d | CARPENER [16 h]; MAZDOOR [16 h] | 1,600 |
| A1530 |  | Lintel and Sunshade Bar Bending Work | 2d | 2024-11-04 | 2024-11-06 | A1520 | 2024-11-06 | 2024-11-08 | 0d | MAZDOOR [16 h]; STEEL FIXER [16 h] | 2,160 |
| A1540 |  | Lintel and SunShade Concrete | 1.88d | 2024-11-06 | 2024-11-08 | A1530 | 2024-11-08 | 2024-11-11 | 0d | MAZDOOR [15 h]; HEAD MASON [15 h]; MASON [15 h]; CONCRETE 1 [15] | 10,425 |
| A1550 |  | Brickwork Upto Roof Level | 5d | 2024-11-08 | 2024-11-14 | A1540 | 2024-11-11 | 2024-11-16 | 0d | BRICK [32]; MASON [32 h]; MAZDOOR [32 h] | 3,200 |
| A1560 |  | Fixing of Doors and Windows Frames | 1.88d | 2024-11-14 | 2024-11-16 | A1550 | 2024-11-16 | 2024-11-19 | 0d | CARPENER [15 h]; MAZDOOR [15 h] | 1,500 |

| ID | WBS | Activity | Duration | Start | Finish | Predecessors | Planned start | Planned finish | Total float | Resources | Cost |
| --- | --- | --- | --- | --- | --- | --- | --- | --- | --- | --- | --- |
|  | SF | **Second Floor** |  | 2024-11-16 | 2025-01-18 |  |  |  |  |  |  |
| A1570 |  | Column Rising upto Roof Level | 3.88d | 2024-11-16 | 2024-11-21 | A1560 | 2024-11-19 | 2024-11-23 | 0d | MAZDOOR [31 h]; HEAD MASON [31 h]; MASON [31 h]; CONCRETE 1 [31] | 21,545 |
| A1580 |  | Staircase Shuttering | 3d | 2024-11-21 | 2024-11-25 | A1570 | 2024-11-23 | 2024-11-27 | 0d | CARPENER [24 h]; MAZDOOR [24 h] | 2,400 |
| A1590 |  | Staircase Bar Bending | 1.88d | 2024-11-25 | 2024-11-27 | A1580 | 2024-11-27 | 2024-11-29 | 0d | MAZDOOR [15 h]; STEEL FIXER [15 h] | 2,025 |
| A1600 |  | Staircase Waist Slab | 1.88d | 2024-11-27 | 2024-11-29 | A1590 | 2024-11-29 | 2024-12-02 | 0d | MASON [15 h]; MAZDOOR [15 h]; CONCRETE 1 [15] | 9,075 |
| A1610 |  | Roof Shuttering | 4.88d | 2024-11-29 | 2024-12-05 | A1600 | 2024-12-02 | 2024-12-07 | 0d | CARPENER [39 h]; MAZDOOR [39 h] | 3,900 |
| A1620 |  | Roof Bar Bending | 5d | 2024-12-05 | 2024-12-11 | A1610 | 2024-12-07 | 2024-12-13 | 0d | MAZDOOR [40 h]; STEEL FIXER [40 h] | 5,400 |
| A1630 |  | Roof Concrete | 2.88d | 2024-12-11 | 2024-12-14 | A1620 | 2024-12-13 | 2024-12-17 | 0d | HEAD MASON [23 h]; MASON [23 h]; MAZDOOR [23 h]; CONCRETE 1 [23] | 15,985 |
| A1640 |  | Deshuttering | 4.88d | 2024-12-14 | 2024-12-20 | A1630 | 2024-12-17 | 2024-12-23 | 0d | MAZDOOR [39 h] | 1,755 |
| A1650 |  | Ceiling Plastering | 4.88d | 2024-12-20 | 2024-12-26 | A1640 | 2024-12-23 | 2024-12-28 | 0d | MASON [40 h]; MAZDOOR [40 h] | 3,600 |
| A1660 |  | Brickwork upto Lintel Level | 3.88d | 2024-12-26 | 2024-12-31 | A1650 | 2024-12-28 | 2025-01-02 | 0d | MASON [31 h]; MAZDOOR [31 h]; BRICK [31] | 3,100 |
| A1670 |  | Lintel and Sunshade Shuttering Work | 4.12d | 2024-12-31 | 2025-01-04 | A1660 | 2025-01-02 | 2025-01-07 | 0d | CONCRETE [23]; MAZDOOR [23 h] | 95,335 |
| A1680 |  | Lintel and Sunshade Bar Bending Work | 3d | 2025-01-04 | 2025-01-08 | A1670 | 2025-01-07 | 2025-01-10 | 0d | MAZDOOR [24 h]; STEEL FIXER [24 h] | 3,240 |
| A1690 |  | Lintel and SunShade Concrete | 2.88d | 2025-01-08 | 2025-01-11 | A1680 | 2025-01-10 | 2025-01-14 | 0d | STEEL FIXER [23 h]; MASON [23 h]; MAZDOOR [23 h]; HEAD MASON [23 h]; CONCRETE 1 [23] | 18,055 |
| A1700 |  | Brickwork Upto Roof Level | 4d | 2025-01-11 | 2025-01-16 | A1690 | 2025-01-14 | 2025-01-18 | 0d | BRICK [32]; MASON [32 h]; MAZDOOR [32 h] | 3,200 |
| A1710 |  | Fixing of Doors and Windows Frames | 1.88d | 2025-01-16 | 2025-01-18 | A1700 | 2025-01-18 | 2025-01-21 | 0d | CARPENER [15 h]; MAZDOOR [15 h] | 1,500 |
|  | TEC | **Terrace** |  | 2025-01-18 | 2025-01-29 |  |  |  |  |  |  |
| A1720 |  | Laying of Stub Column Reinforcement | 3d | 2025-01-18 | 2025-01-22 | A1710 | 2025-01-21 | 2025-01-24 | 0d | MAZDOOR [24 h]; STEEL FIXER [24 h] | 3,240 |
| A1730 |  | Stub Column Shuttering | 2d | 2025-01-22 | 2025-01-24 | A1720 | 2025-01-24 | 2025-01-27 | 0d | CARPENER [16 h]; MAZDOOR [16 h] | 1,600 |
| A1740 |  | Pouring of Concrete | 1.88d | 2025-01-24 | 2025-01-27 | A1730 | 2025-01-27 | 2025-01-29 | 0d | MAZDOOR [15 h]; HEAD MASON [15 h]; MASON [15 h]; CONCRETE 1 [15] | 10,425 |
| A1750 |  | Deshuttering | 1d | 2025-01-27 | 2025-01-28 | A1740 | 2025-01-29 | 2025-01-30 | 0d | MAZDOOR [8 h] | 360 |
| A1760 |  | Fixing of Terrace Door Frame | 1d | 2025-01-28 | 2025-01-29 | A1750 | 2025-01-30 | 2025-01-31 | 0d | MAZDOOR [8 h]; CARPENER [8 h] | 800 |
|  | EF | **Exterior Finishing** |  | 2025-01-29 | 2025-09-22 |  |  |  |  |  |  |
|  | WSW | **Water and Sanitation Work** |  | 2025-01-29 | 2025-03-24 |  |  |  |  |  |  |
| A1790 |  | Water Proofing | 4.88d | 2025-01-29 | 2025-02-04 | A1760 | 2025-01-31 | 2025-02-06 | 0d | MAZDOOR [39 h]; MASON [39 h] | 3,510 |
| A1800 |  | Pipe Works | 19.62d | 2025-02-04 | 2025-02-27 | A1790 | 2025-02-06 | 2025-03-01 | 0d | PLUMBER [157 h] | 15,700 |
| A1810 |  | Terrace Proofing | 8.75d | 2025-02-27 | 2025-03-10 | A1800 | 2025-03-01 | 2025-03-12 | 0d | MAZDOOR [70 h] | 3,150 |
| A1820 |  | Sanitaryware Fixtures | 11.75d | 2025-03-10 | 2025-03-24 | A1810 | 2025-03-12 | 2025-03-26 | 0d | PLUMBER [94 h]; MAZDOOR [94 h] | 13,630 |

| ID | WBS | Activity | Duration | Start | Finish | Predecessors | Planned start | Planned finish | Total float | Resources | Cost |
| --- | --- | --- | --- | --- | --- | --- | --- | --- | --- | --- | --- |
|  | Plst | **Plastering** |  | 2025-03-24 | 2025-04-22 |  |  |  |  |  |  |
| A1770 |  | Erection of Subholding | 4.88d | 2025-03-24 | 2025-03-29 | A1820 | 2025-03-26 | 2025-04-01 | 0d | MAZDOOR [39 h]; ELECTRICIAN [39 h] | 6,630 |
| A1780 |  | Wall Plastering | 19.62d | 2025-03-29 | 2025-04-22 | A1770 | 2025-04-01 | 2025-04-24 | 0d | MAZDOOR [181 h]; MASON [181 h] | 16,290 |
|  | EW | **Electrical Work** |  | 2025-04-22 | 2025-05-21 |  |  |  |  |  |  |
| A1830 |  | Wiring | 9.75d | 2025-04-22 | 2025-05-03 | A1780 | 2025-04-24 | 2025-05-06 | 0d | ELECTRICIAN [78 h] | 9,750 |
| A1840 |  | Installation of Panels | 4.88d | 2025-05-03 | 2025-05-09 | A1830 | 2025-05-06 | 2025-05-12 | 0d | CARPENER [39 h] | 2,145 |
| A1850 |  | Earthing | 4.88d | 2025-05-09 | 2025-05-15 | A1840 | 2025-05-12 | 2025-05-17 | 0d | ELECTRICIAN [39 h] | 4,875 |
| A1860 |  | Switchers and Fixtures | 4.88d | 2025-05-15 | 2025-05-21 | A1850 | 2025-05-17 | 2025-05-23 | 0d | ELECTRICIAN [39 h] | 4,875 |
|  | D&WF | **Doors And Windows Finishing** |  | 2025-05-21 | 2025-06-03 |  |  |  |  |  |  |
| A1870 |  | Doors And Windows Shutter Fixing | 5.88d | 2025-05-21 | 2025-05-28 | A1860 | 2025-05-23 | 2025-05-30 | 0d | CARPENER [47 h] | 2,585 |
| A1880 |  | Fixing of Staircase Railing | 4.88d | 2025-05-28 | 2025-06-03 | A1870 | 2025-05-30 | 2025-06-05 | 0d | STEEL FIXER [40 h] | 3,600 |
|  | Flr F | **Floor Finishing** |  | 2025-06-03 | 2025-07-24 |  |  |  |  |  |  |
| A1890 |  | Leveling of Floors | 4.88d | 2025-06-03 | 2025-06-09 | A1880 | 2025-06-05 | 2025-06-11 | 0d | MASON [40 h]; MAZDOOR [40 h] | 3,600 |
| A1900 |  | Laying of Tiles | 19.62d | 2025-06-09 | 2025-07-02 | A1890 | 2025-06-11 | 2025-07-04 | 0d | MAZDOOR [160 h]; TILE MASON [160 h] | 16,800 |
| A1910 |  | Polishing | 8.75d | 2025-07-02 | 2025-07-12 | A1900 | 2025-07-04 | 2025-07-15 | 0d | MASON [72 h]; MAZDOOR [72 h] | 6,480 |
| A1920 |  | Laying of Mortar Bed | 9.75d | 2025-07-12 | 2025-07-24 | A1910 | 2025-07-15 | 2025-07-26 | 0d | MAZDOOR [79 h]; MASON [79 h] | 7,110 |
|  | Paint | **Painting** |  | 2025-07-24 | 2025-09-22 |  |  |  |  |  |  |
| A1930 |  | Appling Putty on Joints | 5d | 2025-07-24 | 2025-07-30 | A1920 | 2025-07-26 | 2025-08-01 | 0d | MAZDOOR [40 h]; MASON [40 h] | 3,600 |
| A1940 |  | Applying Primer | 11.75d | 2025-07-30 | 2025-08-13 | A1930 | 2025-08-01 | 2025-08-15 | 0d | MAZDOOR [96 h]; MASON [96 h] | 8,640 |
| A1950 |  | Applying First Coat of Paint | 16.62d | 2025-08-13 | 2025-09-02 | A1940 | 2025-08-15 | 2025-09-04 | 0d | PAINTER [118 h] | 11,210 |
| A1960 |  | Applying Second Coat of Paint | 16.62d | 2025-09-02 | 2025-09-22 | A1950 | 2025-09-04 | 2025-09-24 | 0d | PAINTER [133 h] | 12,635 |
|  | HO | **Handing Over** |  | 2025-09-22 | 2025-09-25 |  |  |  |  |  |  |
| A1970 |  | Site Clearance | 2d | 2025-09-22 | 2025-09-24 | A1960 | 2025-09-24 | 2025-09-26 | 0d | SITE ENGINEERER [16 h] | 8,000 |
| A1980 |  | Handing Over to the Client | 1d | 2025-09-24 | 2025-09-25 | A1970 | 2025-09-26 | 2025-09-27 | 0d | SENIOR ENGG [8 h]; SITE ENGINEERER [8 h] | 9,200 |

| WBS | Activity |
| --- | --- |
| PostP | **Post Project Phase** |
| S&M | **Maintenence** |
